# Sample Substation Project

Schedule from MS Project XML, 2026-10-01 to 2027-01-22, status date 2026-11-10, A marks actual dates.

## Schedule

| ID | WBS | Task | Duration | Start | Finish | Predecessors | Complete | Remaining | Actual start | Actual finish | Total slack |
| --- | --- | --- | --- | --- | --- | --- | --- | --- | --- | --- | --- |
| 1 | 1 | **Sample Substation Project** | 113d | 2026-10-01 | 2027-01-22 |  |  |  |  |  | 0d |
| 2 | 1.1 | **Engineering** | 30d | 2026-10-01 | 2026-10-31 |  |  |  |  |  | 0d |
| 3 | 1.1.1 | Design Basis Report | 10d | 2026-10-01 A | 2026-10-11 |  | 100% |  |  | 2026-10-13 |  |
| 4 | 1.1.2 | Detailed Design | 20d | 2026-10-11 | 2026-10-31 | 3 | 100% |  | 2026-10-13 | 2026-11-06 |  |
| 5 | 1.1.3 | Design Review | 5d | 2026-10-21 | 2026-10-26 | 4SS+10d | 100% |  | 2026-10-26 | 2026-10-30 |  |
| 6 | 1.2 | **Procurement** | 60d | 2026-10-16 | 2026-12-15 |  |  |  |  |  | 0d |
| 7 | 1.2.1 | Transformer Order | 5d | 2026-10-16 A | 2026-10-21 A | 4SS+5d | 100% |  |  |  |  |
| 8 | 1.2.2 | Transformer Delivery | 55d | 2026-10-21 A | 2026-12-15 | 7 | 45% | 35d |  |  | 0d |
| 9 | 1.3 | **Civil Works** | 25d | 2026-11-06 | 2026-12-01 |  |  |  |  |  | 0d |
| 10 | 1.3.1 | Site Clearance | 6d | 2026-11-06 A | 2026-11-12 | 4 | 40% | 2d |  |  | 0d |
| 11 | 1.3.2 | Foundations | 19d | 2026-11-12 | 2026-12-01 | 10 |  |  |  |  | 0d |
| 12 | 1.3.3 | Cable Trenches | 9d | 2026-11-22 | 2026-12-01 | 11SS+10d |  |  |  |  | 0d |
| 13 | 1.4 | **Installation** | 37d | 2026-12-01 | 2027-01-07 |  |  |  |  |  | 0d |
| 14 | 1.4.1 | Transformer Erection | 13d | 2026-12-15 | 2026-12-28 | 11FS+10d, 8 |  |  |  |  | 0d |
| 15 | 1.4.2 | Cabling | 18d | 2026-12-01 | 2026-12-19 | 12 |  |  |  |  | 0d |
| 16 | 1.4.3 | Protection & Control | 10d | 2026-12-28 | 2027-01-07 | 14FF+5d, 15 |  |  |  |  | 0d |
| 17 | 1.5 | **Commissioning** | 15d | 2027-01-07 | 2027-01-22 |  |  |  |  |  | 0d |
| 18 | 1.5.1 | Pre-commissioning Tests | 10d | 2027-01-07 | 2027-01-17 | 16 |  |  |  |  | 0d |
| 19 | 1.5.2 | Energisation | 5d | 2027-01-17 | 2027-01-22 | 18 |  |  |  |  | 0d |
